How a schedule from MS Project changed from version to version. A marks actual dates.

## Version 1 (data date 2018-10-10, saved 2018-12-09)

Note of the change: 2018/12/09-可行性研究报告V0.2.4+甘特图更新+项目总体计划书V0.3.3+需求工程计划V0.5.3+愿景和范围文档V0.1.3

| ID | WBS | Task | Duration | Start | Finish | Predecessors | Complete | Total float |
| --- | --- | --- | --- | --- | --- | --- | --- | --- |
| 1 | 1 | **软件工程系列课程教学辅助网站需求工程计划** | 203.75d | 2018-09-19 A | 2019-01-12 |  | 67% |  |
| 2 | 1.1 | **知识准备——UML翻转** | 55.5d | 2018-10-12 A | 2018-11-10 A |  | 100% |  |
| 3 |  | 寻找PPT模板 | 2.5d | 2018-10-12 A | 2018-10-13 A |  | 100% |  |
| 4 |  | UML概述材料 | 2.25d | 2018-10-12 A | 2018-10-13 A |  | 100% |  |
| 5 |  | UML概论ppt制作 | 1d | 2018-10-14 A | 2018-10-14 A | 3, 4 | 100% |  |
| 6 |  | UML概述修改 | 1d | 2018-10-15 A | 2018-10-15 A | 5 | 100% |  |
| 7 |  | UML概述修改 | 0.25d | 2018-10-15 A | 2018-10-15 A | 6 | 100% |  |
| 8 |  | UML概论评审 | 1d | 2018-10-19 A | 2018-10-19 A | 7 | 100% |  |
| 9 |  | UML工具ppt制作 | 1d | 2018-10-21 A | 2018-10-21 A | 8, 3 | 100% |  |
| 10 |  | UML工具ppt修改 | 1d | 2018-10-22 A | 2018-10-22 A | 9 | 100% |  |
| 11 |  | UML工具ppt修改 | 1d | 2018-10-23 A | 2018-10-23 A | 10 | 100% |  |
| 12 |  | UML工具ppt评审 | 1d | 2018-10-24 A | 2018-10-24 A | 11 | 100% |  |
| 13 |  | UML基础1的ppt材料制作 | 1d | 2018-10-27 A | 2018-10-27 A | 3, 12 | 100% |  |
| 14 |  | UML基础1:ppt修改 | 1d | 2018-10-28 A | 2018-10-28 A | 13 | 100% |  |
| 15 |  | UML基础1:ppt修改 | 1d | 2018-10-30 A | 2018-10-30 A | 14 | 100% |  |
| 16 |  | UML基础1评审 | 0.5d | 2018-10-31 A | 2018-10-31 A | 15 | 100% |  |
| 17 |  | UML基础2的ppt材料制作 | 1d | 2018-11-01 A | 2018-11-01 A | 3, 16 | 100% |  |
| 18 |  | UML基础2:ppt修改 | 1d | 2018-11-03 A | 2018-11-03 A | 17 | 100% |  |
| 19 |  | UML基础2:ppt修改 | 1.5d | 2018-11-04 A | 2018-11-04 A | 18 | 100% |  |
| 20 |  | UML基础2:ppt修改 | 1.5d | 2018-11-05 A | 2018-11-05 A | 19 | 100% |  |
| 21 |  | UML基础2:ppt修改 | 1d | 2018-11-06 A | 2018-11-06 A | 20 | 100% |  |
| 22 |  | UML基础2:评审 | 1d | 2018-11-10 A | 2018-11-10 A | 21 | 100% |  |
| 23 | 1.2 | **项目启动** | 73d | 2018-09-19 A | 2018-11-04 |  | 94% | 0d |
| 24 |  | 召开会议启动计划 | 1d | 2018-09-19 A | 2018-09-19 A |  | 100% |  |
| 25 |  | 软件资源配置 | 2.5d | 2018-09-20 A | 2018-09-21 A | 24 | 100% |  |
| 26 |  | 识别干系人 | 1d | 2018-09-20 A | 2018-09-20 A | 24 | 100% |  |
| 27 |  | 编写资源日历 | 1d | 2018-09-20 | 2018-09-20 | 24 |  |  |
| 28 | 1.2.5 | **起草可行分析报告** | 13.25d | 2018-10-07 | 2018-10-13 A | 24, 25 | 100% |  |
| 29 |  | 市场分析可行性初步 | 1d | 2018-10-08 A | 2018-10-08 A | 24 | 100% |  |
| 30 |  | 操作可行性初步 | 1d | 2018-10-08 A | 2018-10-08 A | 24 | 100% |  |
| 31 |  | 法律可行性初步 | 1d | 2018-10-09 A | 2018-10-09 A |  | 100% |  |
| 32 |  | 经济可行性初步 | 3.5d | 2018-10-11 A | 2018-10-12 A |  | 100% |  |
| 33 |  | 时间和资源可行性初步 | 0.5d | 2018-10-08 A | 2018-10-08 A | 24 | 100% |  |
| 34 |  | SWOT分析初步 | 1d | 2018-10-12 A | 2018-10-12 A | 26 | 100% |  |
| 35 |  | 项目风险 | 1d | 2018-10-10 A | 2018-10-10 A |  | 100% |  |
| 36 |  | 文档整合 | 1d | 2018-10-13 A | 2018-10-13 A | 29, 30, 31, 32, 33, 34, 35 | 100% |  |
| 37 |  | logo设计 | 1d | 2018-11-04 A | 2018-11-04 A | 24 | 100% |  |
| 38 | 1.3 | **项目计划** | 125.5d | 2018-09-27 A | 2018-12-09 | 23 | 83% | 0d |
| 39 |  | 寻找并选择文档模板 | 1d | 2018-09-27 A | 2018-09-27 A | 37, 28 | 100% |  |
| 40 |  | 起草项目章程 | 1d | 2018-09-27 A | 2018-09-27 A | 28, 33, 35, 24, 37, 39 | 100% |  |
| 41 | 1.3.3 | **起草开发计划书** | 16.25d | 2018-09-27 | 2018-10-10 |  | 45% |  |
| 42 |  | 初步绘制甘特图 | 1d | 2018-09-28 A | 2018-09-28 A | 33, 40, 24 | 100% |  |
| 43 |  | 子计划初步编写 | 0.4d | 2018-09-30 A | 2018-09-30 A | 25, 33, 35 | 100% |  |
| 44 |  | OBS图 | 1.5d | 2018-10-08 A | 2018-10-09 A | 26 | 100% |  |
| 45 |  | WBS图 | 8.25d | 2018-10-09 A | 2018-10-12 | 33 | 12% |  |
| 46 |  | 设置预算 | 1d | 2018-10-13 A | 2018-10-14 A | 32 | 100% |  |
| 47 |  | 文档的汇总与编写 | 1d | 2018-10-09 A | 2018-10-09 A | 42, 43, 44, 45 | 100% |  |
| 48 |  | 更新开发计划书 | 1d | 2018-10-14 A | 2018-10-14 A | 41, 25 | 100% |  |
| 49 |  | 更新开发计划书 | 1d | 2018-10-21 A | 2018-10-21 A | 48, 43 | 100% |  |
| 50 | 1.3.6 | **起草需求工程计划** | 14.25d | 2018-10-15 | 2018-10-21 |  | 100% |  |
| 51 |  | 项目概述 | 2d | 2018-10-15 A | 2018-10-16 A | 28, 49, 40 | 100% |  |
| 52 |  | 项目人力资源管理初步 | 2.5d | 2018-10-16 A | 2018-10-17 A | 44 | 100% |  |
| 53 |  | 项目风险管理初步 | 2.5d | 2018-10-16 A | 2018-10-17 A | 35 | 100% |  |
| 54 |  | 项目范围管理初步 | 2.5d | 2018-10-16 A | 2018-10-17 A | 44, 24, 41 | 100% |  |
| 55 |  | 项目配置管理初步 | 1d | 2018-10-18 A | 2018-10-18 A | 25 | 100% |  |
| 56 |  | 项目质量管理初步 | 3.5d | 2018-10-18 A | 2018-10-19 A | 40, 49 | 100% |  |
| 57 |  | 项目沟通管理初步 | 4d | 2018-10-18 A | 2018-10-19 A | 27 | 100% |  |
| 58 |  | 项目采购管理初步 | 0d | 2018-10-18 A | 2018-10-18 A | 29 | 100% |  |
| 59 |  | 项目成本管理初步 | 1d | 2018-10-14 A | 2018-10-15 A | 46 | 100% |  |
| 60 |  | 整合文档以及编写其他内容 | 0.5d | 2018-10-20 A | 2018-10-20 A | 52, 53, 54, 55, 56, 57, 58 | 100% |  |
| 61 |  | 更新需求工程计划 | 1d | 2018-10-28 A | 2018-10-28 A | 50 | 100% |  |
| 62 |  | 更新开发计划书 | 1d | 2018-10-28 A | 2018-10-28 A | 49, 57 | 100% |  |
| 63 |  | 更新需求工程计划 | 1d | 2018-11-04 A | 2018-11-04 A | 50, 53 | 100% |  |
| 64 |  | 更新开发计划书 | 1d | 2018-11-04 A | 2018-11-04 A | 62 | 100% |  |
| 65 |  | 更新可行性分析报告 | 1d | 2018-11-11 A | 2018-11-11 A | 28, 35, 29 | 100% |  |
| 66 |  | 更新需求工程计划 | 1d | 2018-11-11 A | 2018-11-11 A | 63, 56, 57 | 100% |  |
| 67 |  | 更新开发计划书 | 1d | 2018-11-11 A | 2018-11-11 A | 64, 55 | 100% |  |
| 68 |  | 寻找ISO9001模板 | 1d | 2018-09-28 A | 2018-09-28 A | 39 | 100% |  |
| 69 |  | 更新项目章程 | 1d | 2018-11-20 A | 2018-11-20 A | 40, 68 | 100% |  |
| 70 |  | 更新可行性分析报告 | 1d | 2018-11-20 A | 2018-11-20 A | 65, 68 | 100% |  |

| ID | WBS | Task | Duration | Start | Finish | Predecessors | Complete | Total float | Constraint |
| --- | --- | --- | --- | --- | --- | --- | --- | --- | --- |
| 71 |  | 更新需求工程计划 | 1d | 2018-11-20 A | 2018-11-20 A | 66, 68 | 100% |  |  |
| 72 |  | 更新开发计划书 | 1d | 2018-11-20 A | 2018-11-20 A | 67, 68 | 100% |  |  |
| 73 |  | 更新项目章程 | 7.5d | 2018-11-21 A | 2018-11-22 | 69, 68 | 13% |  |  |
| 74 |  | 更新可行性分析报告 | 1d | 2018-11-21 A | 2018-11-21 A | 70, 68 | 100% |  |  |
| 75 |  | 更新可行性分析报告 | 1d | 2018-11-24 A | 2018-11-24 A | 74, 68 | 100% |  |  |
| 76 |  | 更新需求工程计划 | 1d | 2018-11-25 A | 2018-11-25 A | 71, 56 | 100% |  |  |
| 77 |  | 更新需求工程计划 | 1d | 2018-11-27 A | 2018-11-27 A | 76, 55 | 100% |  |  |
| 78 |  | 更新开发计划书 | 1d | 2018-11-27 A | 2018-11-27 A | 59, 72 | 100% |  |  |
| 79 |  | 更新需求工程计划 | 1d | 2018-11-29 A | 2018-11-29 A | 77, 52 | 100% |  |  |
| 80 |  | 更新需求工程计划 | 1d | 2018-11-29 A | 2018-11-29 A | 44, 79 | 100% |  |  |
| 81 |  | 关于组内项目经理更换的重大抉择 | 1d | 2018-11-30 A | 2018-11-30 A | 154, 155 | 100% |  |  |
| 82 |  | 更新WBS图 | 1d | 2018-11-30 A | 2018-11-30 A | 45 | 100% |  |  |
| 83 |  | 更新OBS图 | 0.5d | 2018-11-30 A | 2018-11-30 A | 44 | 100% |  |  |
| 84 |  | 更新风险管理计划 | 0.67d | 2018-10-18 A | 2018-10-18 A | 53 | 100% |  |  |
| 85 |  | 更新可行性分析报告 | 0.5d | 2018-12-01 A | 2018-12-01 A | 84, 75 | 100% |  |  |
| 86 |  | 修改里程碑 | 1d | 2018-11-22 | 2018-11-22 | 73 |  |  |  |
| 87 |  | 更新项目章程 | 1d | 2018-12-01 A | 2018-12-01 A | 73, 86 | 100% |  |  |
| 88 |  | 更新需求工程计划 | 0.5d | 2018-12-01 A | 2018-12-01 A | 80, 82, 83 | 100% |  |  |
| 89 |  | 更新需求工程计划 | 0.5d | 2018-12-02 A | 2018-12-02 A | 88, 83 | 100% |  |  |
| 90 |  | 更新项目章程 | 1d | 2018-12-03 A | 2018-12-03 A | 87 | 100% |  |  |
| 91 |  | 更新开发计划书 | 1d | 2018-12-03 A | 2018-12-03 A | 78, 73 | 100% |  |  |
| 92 |  | 更新需求工程计划 | 0.5d | 2018-12-03 A | 2018-12-03 A | 89, 82 | 100% |  |  |
| 93 |  | 更新需求工程计划 | 0.5d | 2018-12-04 A | 2018-12-04 A | 92, 82 | 100% |  |  |
| 94 |  | 更新需求工程计划 | 2.5d | 2018-12-04 A | 2018-12-05 A | 93 | 100% |  |  |
| 95 |  | 更新可行性分析报告 | 1d | 2018-12-05 A | 2018-12-05 A | 85 | 100% |  |  |
| 96 |  | 更新项目章程 | 1d | 2018-12-05 A | 2018-12-05 A | 90, 86 | 100% |  |  |
| 97 |  | 项目章程 | 0.5d | 2018-12-05 A | 2018-12-05 A | 96 | 100% |  |  |
| 98 |  | 更新需求工程计划 | 0.5d | 2018-12-05 A | 2018-12-05 A | 94, 86 | 100% |  |  |
| 99 |  | 更新需求工程计划 | 0.5d | 2018-12-05 A | 2018-12-05 A | 98 | 100% |  |  |
| 100 |  | 更新需求工程计划 | 0.5d | 2018-12-05 A | 2018-12-05 A | 99 | 100% |  |  |
| 101 |  | 更新开发计划书 | 0.5d | 2018-12-05 A | 2018-12-05 A | 91, 86 | 100% |  |  |
| 102 |  | 更新开发计划书 | 1d | 2018-12-05 A | 2018-12-05 A | 101 | 100% |  |  |
| 103 |  | 更新需求工程计划 | 0.5d | 2018-12-06 A | 2018-12-06 A | 100, 52 | 100% |  |  |
| 104 |  | 更新可行性分析报告 | 0.5d | 2018-12-06 A | 2018-12-06 A | 95, 34 | 100% |  |  |
| 105 |  | 更新开发计划书 | 1d | 2018-12-06 A | 2018-12-06 A | 102 | 100% |  |  |
| 106 |  | 甘特图修订 | 1d | 2018-12-07 A | 2018-12-07 A | 42 | 100% |  |  |
| 107 |  | 可行性分分析报告 | 1d | 2018-12-07 A | 2018-12-07 A | 104 | 100% |  |  |
| 108 |  | 项目总体计划书 | 1d | 2018-12-07 A | 2018-12-08 A | 105 | 100% |  |  |
| 109 |  | 更新愿景和范围文档 | 1d | 2018-12-09 A | 2018-12-09 A |  | 100% |  |  |
| 110 |  | 需求工程计划 | 1d | 2018-12-07 A | 2018-12-07 A | 103 | 100% |  |  |
| 111 | 1.4 | **项目执行** | 89.25d? | 2018-11-28 A | 2019-01-13 | 38 | 41% | 0d |  |
| 112 | 1.4.1 | **需求开发** | 89.25d? | 2018-11-28 A | 2019-01-13 |  | 42% | 0d |  |
| 113 | 1.4.1.1 | **需求获取** | 19d | 2018-11-28 A | 2018-12-08 |  | 71% | 0d |  |
| 114 |  | 范围和愿景文档 | 8d | 2018-11-28 A | 2018-11-29 A | 97, 105, 104, 100 | 100% |  |  |
| 115 |  | 初步绘制低保真界面原型（网站） | 13d | 2018-11-28 A | 2018-12-04 A | 114 | 100% |  |  |
| 116 |  | 初步绘低保真证界面原型（APP） | 20.5d | 2018-11-28 A | 2018-12-05 A | 114 | 100% |  |  |
| 117 |  | 用户群分类 | 3d | 2018-11-30 | 2018-12-02 | 114 |  |  |  |
| 118 |  | 确定开发过程 | 3d | 2018-12-02 | 2018-12-04 | 114, 117 |  |  |  |
| 119 |  | 选择产品代表 | 3d | 2018-12-02 | 2018-12-04 | 114, 117 |  |  |  |
| 120 |  | 建立核心队伍 | 3d | 2018-12-05 | 2018-12-06 | 114, 117, 119 |  |  |  |
| 121 |  | 确定使用实例 | 3d | 2018-12-05 | 2018-12-06 | 114, 118 |  |  |  |
| 122 |  | 修改绘制APP原型低保真 | 3d | 2018-12-01 | 2018-12-02 | 116 |  |  |  |
| 123 |  | 更新愿景和范围文档 | 1d | 2018-12-05 A | 2018-12-05 A | 115 | 100% |  |  |
| 124 |  | 更新愿景和范围文档 | 1d | 2018-12-06 A | 2018-12-06 A | 123 | 100% |  |  |
| 125 |  | 更新愿景和范围文档 | 1d | 2018-12-07 A | 2018-12-08 A | 124 | 100% |  |  |
| 126 |  | 需求分析 | 0.5d? | 2018-12-06 | 2018-12-06 | 113 |  |  |  |
| 127 |  | 需求规格说明 | 14.25d | 2018-12-21 | 2018-12-28 | 126 |  |  |  |
| 128 |  | 需求规格审核 | 29.5d | 2018-12-29 | 2019-01-13 | 127, 129 |  |  |  |
| 129 |  | 需求管理 | 0.5d? | 2018-12-06 | 2018-12-06 | 113 |  |  |  |
| 130 | 1.5 | **项目监控** | 197.25d | 2018-09-25 A | 2019-01-12 | 23 | 96% |  |  |
| 131 |  | 会议模板初版 | 1d | 2018-09-25 A | 2018-09-25 A |  | 100% |  |  |
| 132 |  | 第一次小组会议 | 1d | 2018-09-25 A | 2018-09-25 A | 131, 143, 159 | 100% |  |  |
| 133 |  | 第二次小组会议 | 1d | 2018-09-29 A | 2018-09-29 A | 132 | 100% |  |  |
| 134 |  | 第一周绩效考评 | 1d | 2018-09-29 A | 2018-09-29 A | 133 | 100% |  |  |
| 135 |  | 第三次小组会议 | 0.1d | 2018-10-10 A | 2018-10-10 A | 133, 134 | 100% |  |  |
| 136 |  | 第二周绩效考评 | 1d | 2018-10-10 A | 2018-10-10 A | 135 | 100% |  |  |
| 137 |  | 第四次小组会议 | 1d | 2018-10-17 A | 2018-10-17 A | 135, 136 | 100% |  |  |
| 138 |  | 第三周绩效考评 | 1d | 2018-10-17 A | 2018-10-17 A | 137 | 100% |  | start no earlier than 2018-10-17 |
| 139 |  | 与杨枨老师进行非正式访谈 | 0.1d | 2018-10-21 A | 2018-10-21 A | 137 | 100% |  |  |
| 140 |  | 第一次临时会议 | 0.1d | 2018-10-21 A | 2018-10-21 A | 139 | 100% |  |  |

| ID | WBS | Task | Duration | Start | Finish | Predecessors | Complete | Total float |
| --- | --- | --- | --- | --- | --- | --- | --- | --- |
| 141 |  | 第五次小组会议 | 0.1d | 2018-10-25 A | 2018-10-25 A | 137, 138 | 100% |  |
| 142 |  | 第四周绩效考评 | 0.1d | 2018-10-25 A | 2018-10-25 A | 141 | 100% |  |
| 143 |  | 会议模板修改 | 1d | 2018-09-26 A | 2018-09-26 A | 131 | 100% |  |
| 144 |  | 第六次小组会议 | 1d | 2018-10-31 A | 2018-10-31 A | 141, 142, 131 | 100% |  |
| 145 |  | 第五周绩效考评 | 0.1d | 2018-11-01 A | 2018-11-01 A | 144 | 100% |  |
| 146 |  | 第七次小组会议 | 1d | 2018-11-07 A | 2018-11-07 A | 144, 145 | 100% |  |
| 147 |  | 第六周绩效考评 | 1d | 2018-11-07 A | 2018-11-07 A | 146 | 100% |  |
| 148 |  | 第八次小组会议 | 1d | 2018-11-14 A | 2018-11-14 A | 146, 147 | 100% |  |
| 149 |  | 第七周绩效考评 | 1d | 2018-11-14 A | 2018-11-14 A | 148 | 100% |  |
| 150 |  | 第九次小组会议 | 1d | 2018-11-21 A | 2018-11-21 A | 148, 149 | 100% |  |
| 151 |  | 第八周绩效考评 | 1d | 2018-11-21 A | 2018-11-21 A | 150 | 100% |  |
| 152 |  | 第十次小组会议 | 1d | 2018-11-28 A | 2018-11-28 A | 150, 151 | 100% |  |
| 153 |  | 第九周绩效考评 | 1d | 2018-11-28 A | 2018-11-28 A | 152 | 100% |  |
| 154 |  | 第一次里程碑评审 | 1d | 2018-11-30 A | 2018-11-30 A |  | 100% |  |
| 155 |  | 第二次临时会议 | 1d | 2018-11-30 A | 2018-11-30 A | 154, 140 | 100% |  |
| 156 |  | 第十一次小组会议 | 1d | 2018-12-05 A | 2018-12-05 A | 152, 153 | 100% |  |
| 157 |  | 第十周绩效考评 | 1d | 2018-12-05 A | 2018-12-05 A | 156 | 100% |  |
| 158 |  | 与杨枨老师进行非正式访谈 | 1d | 2018-12-05 A | 2018-12-05 A | 139, 156 | 100% |  |
| 159 |  | 会议模板第三次 | 1d | 2018-12-06 A | 2018-12-06 A | 143 | 100% |  |
| 160 |  | 第十二次小组会议 | 1d | 2018-12-07 | 2018-12-07 | 156, 159 |  |  |
| 161 | 1.6 | **项目收尾** | 9.75d | 2019-01-08 | 2019-01-12 | 111, 130 |  | 0d |
| 162 |  | 项目总结 | 2d | 2019-01-08 | 2019-01-08 |  |  |  |
| 163 |  | 制作最终PPT | 2d | 2019-01-09 | 2019-01-10 | 162 |  |  |
| 164 |  | 答辩 | 1d | 2019-01-10 | 2019-01-10 | 163, 162 |  |  |
| 165 |  | 配置管理系统信息提交 | 1d | 2019-01-11 | 2019-01-11 | 164, 162 |  |  |
| 166 |  | 散伙饭 | 1d | 2019-01-12 | 2019-01-12 | 165, 164 |  |  |

## Version 2 (data date 2018-10-10, saved 2018-12-09)

Note of the change: 2018/12/09-甘特图更新

Last finish stays 2019-01-13. Complete tasks 134 → 137.

Added:

| ID | Task | Duration | Start | Finish | Predecessors | Resources |
| --- | --- | --- | --- | --- | --- | --- |
| 23 | UML基础3的ppt材料制作 | 3.5d | 2018-11-11 | 2018-11-12 | 22 | 邓; 庄 |
| 127 | 更新愿景和范围文档 | 1d | 2018-12-08 | 2018-12-08 | 126 | 庄; 邓 |
| 128 | 发送客户代表，产品代表，管理员代表，学生代表邀请函 | 1d | 2018-12-02 | 2018-12-02 | 118 | 庄 |

Changed:

| ID | Task | Start | Finish | Duration | Complete | Predecessors |
| --- | --- | --- | --- | --- | --- | --- |
| 1 | **软件工程系列课程教学辅助网站需求工程计划** |  |  |  | 67% → 71% |  |
| 2 | **知识准备——UML翻转** |  | 2018-11-10 A → 2018-11-10 |  | 100% → 87% |  |
| 13 | UML基础1的ppt材料制作 |  | 2018-10-27 A → 2018-10-28 (+1d) | 1d → 2.6d | 100% → 99% |  |
| 39 | **项目计划** |  | 2018-12-09 → 2018-12-10 (+1d) | 125.5d → 126d |  |  |
| 108 | 可行性分分析报告 | 2018-12-07 A → 2018-12-09 A (+2d) | 2018-12-07 A → 2018-12-10 A (+3d) |  |  |  |
| 109 | 项目总体计划书 | 2018-12-07 A → 2018-12-09 A (+2d) | 2018-12-08 A → 2018-12-10 A (+2d) |  |  |  |
| 111 | 需求工程计划 | 2018-12-07 A → 2018-12-09 A (+2d) | 2018-12-07 A → 2018-12-10 A (+3d) |  |  |  |
| 112 | **项目执行** |  |  |  | 41% → 53% |  |
| 113 | **需求开发** |  |  |  | 42% → 53% |  |
| 114 | **需求获取** |  |  |  | 71% → 88% |  |
| 116 | 初步绘制低保真界面原型（网站） |  | 2018-12-04 A → 2018-12-03 A (-1d) | 13d → 21.75d |  |  |
| 117 | 初步绘低保真证界面原型（APP） |  | 2018-12-05 A → 2018-12-03 A (-2d) | 20.5d → 12d |  |  |
| 118 | 用户群分类 | 2018-11-30 A | 2018-12-02 A | 3d → 4.7d | 0% → 100% |  |
| 119 | 确定开发过程 |  |  |  |  | 115, 118 → 115, 128 |
| 120 | 选择产品代表 | 2018-12-02 → 2018-12-05 A (+3d) | 2018-12-04 → 2018-12-06 A (+2d) | 3d → 2.7d | 0% → 100% | 115, 118 → 115, 128 |
| 121 | 建立核心队伍 | 2018-12-05 A | 2018-12-06 A | 3d → 4.15d | 0% → 100% | 115, 118, 120 → 115, 120, 128 |
| 123 | 修改绘制APP原型低保真 | 2018-12-01 A | 2018-12-02 A | 3d → 2.75d | 0% → 100% |  |
| 126 | 更新愿景和范围文档 |  |  | 1d → 0.5d |  |  |
| 163 | 第十二次小组会议 | 2018-12-07 → 2018-12-12 (+5d) | 2018-12-07 → 2018-12-12 (+5d) |  |  |  |

## Version 3 (data date 2018-10-10, saved 2018-12-12)

Note of the change: 2018/12/12-甘特图更新

Last finish stays 2019-01-13. Complete tasks 137 → 151.

Added:

| ID | Task | Duration | Start | Finish | Predecessors | Resources |
| --- | --- | --- | --- | --- | --- | --- |
| 24 | UML基础3：评审 | 1d? | 2018-10-12 | 2018-10-13 |  |  |
| 125 | 修改绘制网页原型低保真 | 1d | 2018-12-03 A | 2018-12-03 A | 117 | 陈; 邓 |
| 131 | **需求获取** | 1d | 2018-11-28 A | 2018-11-28 |  |  |
| 132 | 教师代表需求初步获取 | 0.25d | 2018-11-28 A | 2018-11-29 A | 130 | 陈; 程; 邓; 诸葛; 庄 |
| 133 | 学生代表需求初步获取 | 0.25d | 2018-11-28 A | 2018-11-29 A | 130 | 陈; 程; 邓; 诸葛; 庄 |
| 134 | 管理员代表需求初步获取 | 1d? | 2018-11-28 | 2018-11-28 |  |  |
| 135 | 编写用例文档 | 1d? | 2018-11-28 | 2018-11-28 |  |  |
| 136 | 编写数据字典 | 1d? | 2018-11-28 | 2018-11-28 |  |  |
| 137 | 为需求进行排序 | 1d? | 2018-11-28 | 2018-11-28 |  |  |
| 138 | 召开JAD会议对需求进行确认 | 1d? | 2018-11-28 | 2018-11-28 |  |  |
| 173 | 与杨枨老师进行非正式访谈 | 1d | 2018-12-06 A | 2018-12-06 A | 171 | 陈; 程; 邓; 诸葛; 庄 |
| 174 | 里程碑需求工程重评 | 1d | 2018-12-01 A | 2018-12-01 A | 167 | 陈; 程; 邓; 诸葛; 庄 |
| 176 | 第十一周绩效考评 | 1d | 2018-12-13 A | 2018-12-13 A | 175 | 陈; 程; 邓; 诸葛; 庄 |

Changed:

| ID | Task | Start | Finish | Duration | Complete | Predecessors | Other |
| --- | --- | --- | --- | --- | --- | --- | --- |
| 1 | **软件工程系列课程教学辅助网站需求工程计划** |  |  |  | 71% → 77% |  |  |
| 2 | **知识准备——UML翻转** |  |  |  | 87% → 97% |  |  |
| 23 | UML基础3的ppt材料制作 | 2018-11-11 → 2018-12-09 A (+28d) | 2018-11-12 → 2018-12-11 A (+29d) | 3.5d → 11.3d | 0% → 100% |  |  |
| 40 | **项目计划** |  |  |  | 83% → 92% |  |  |
| 75 | 更新项目章程 |  | 2018-11-22 A |  | 13% → 100% |  |  |
| 88 | 修改里程碑 | 2018-11-22 A | 2018-11-22 A |  | 0% → 100% |  |  |
| 107 | 更新项目开发计划书 |  |  |  |  |  | was named 更新开发计划书 |
| 113 | **项目执行** |  |  |  | 53% → 58% |  |  |
| 114 | **需求开发** |  |  |  | 53% → 58% |  |  |
| 115 | **需求获取** |  |  | 19d → 19d? | 88% → 93% |  |  |
| 120 | 确定开发过程 | 2018-12-02 A | 2018-12-04 A |  | 0% → 100% |  |  |
| 123 | 确定使用实例 | 2018-12-05 A | 2018-12-06 A |  | 0% → 100% |  |  |
| 129 | 更新愿景和范围文档 | 2018-12-08 A | 2018-12-08 A |  | 0% → 100% |  |  |
| 130 | 发送客户代表，产品代表，管理员代表，学生代表邀请函 | 2018-12-02 A | 2018-12-02 A |  | 0% → 100% |  |  |
| 143 | **项目监控** |  |  |  | 96% → 100% |  |  |
| 175 | 第十二次小组会议 | 2018-12-12 A | 2018-12-12 A |  | 0% → 100% | 169, 172 → 169, 172, 174 |  |

## Version 4 (data date 2018-10-10, saved 2018-12-15)

Note of the change: 2018/12/15-甘特图更新

Last finish stays 2019-01-13. Complete tasks 151 → 159.

Added:

| ID | Task | Duration | Start | Finish | Predecessors | Resources |
| --- | --- | --- | --- | --- | --- | --- |
| 130 | 更新愿景和范围文档 | 1d | 2018-12-14 A | 2018-12-14 A | 129 | 庄 |
| 140 | 绘制关联图 | 1d | 2018-12-15 A | 2018-12-15 A | 130 | 邓 |
| 141 | 绘制高保真APP原型 | 3.5d | 2018-12-15 | 2018-12-16 | 118, 130 | 程; 诸葛 |
| 142 | 绘制高保真网站原型 | 5.5d | 2018-12-15 | 2018-12-16 | 117, 130 | 陈; 邓 |
| 143 | 确定需求优先级 | 1d | 2018-11-30 | 2018-11-30 | 137 | 诸葛 |
| 146 | **编写需求规格说明书** | 7.5d? | 2018-12-14 A | 2018-12-18 |  |  |
| 147 | 寻找需求规格模板 | 0.5d | 2018-12-14 A | 2018-12-14 A | 130 | 庄 |
| 148 | 需求规格说明书第一二章节 | 0.5d | 2018-12-14 A | 2018-12-14 A | 130, 110, 109 | 庄 |
| 149 | 需求规格说明书第三章 | 5.5d | 2018-12-15 | 2018-12-18 | 130, 136 | 陈; 邓 |
| 150 | 需求规格说明书第四章 | 5.5d | 2018-12-15 | 2018-12-18 | 130, 144, 137 | 程; 诸葛 |
| 151 | 需求规格说明书第五章 | 1d? | 2018-12-14 | 2018-12-15 |  |  |
| 152 | 需求规格说明书第六章 | 1d? | 2018-12-14 | 2018-12-15 |  |  |
| 153 | 需求规格说明书第七八章 | 1d? | 2018-12-14 | 2018-12-15 |  |  |
| 154 | 整合需求规格说明书 | 1d? | 2018-12-14 | 2018-12-15 |  |  |
| 191 | 学生代表需求初步获取会议 | 1d | 2018-12-13 A | 2018-12-13 A | 190 | 诸葛 |

Changed:

| ID | Task | Start | Finish | Duration | Complete | Predecessors | Other |
| --- | --- | --- | --- | --- | --- | --- | --- |
| 1 | **软件工程系列课程教学辅助网站需求工程计划** |  |  |  | 77% → 76% |  |  |
| 113 | **项目执行** |  |  |  | 58% → 56% |  |  |
| 114 | **需求开发** |  | 2019-01-13 → 2018-12-28 (-16d) | 89.25d? → 57.75d? | 58% → 73% |  |  |
| 115 | **需求获取** |  | 2018-12-08 → 2018-12-15 (+7d) | 19d? → 32.25d? | 93% → 97% |  |  |
| 132 | **具体需求获取** |  |  |  |  |  | was named 需求获取 |
| 136 | 编写用例文档 | 2018-11-28 → 2018-12-14 A (+16d) | 2018-11-28 → 2018-12-15 A (+17d) | 1d? → 1d | 0% → 100% | none → 130 | resources none → 陈; 邓 |
| 137 | 为需求进行排序 | 2018-11-28 → 2018-11-29 A (+1d) | 2018-11-28 → 2018-11-29 A (+1d) | 1d? → 1d | 0% → 100% | none → 133, 134 | resources none → 诸葛 |
| 139 | **需求分析** |  |  |  | 0% → 15% |  |  |
| 144 | 编写数据字典 | 2018-11-28 → 2018-12-14 A (+16d) | 2018-11-28 → 2018-12-14 A (+16d) | 1d? → 0.71d | 0% → 100% | none → 130 | resources none → 程; 陈 |
| 145 | **需求规格说明** |  |  |  | 0% → 6% |  |  |
| 155 | 需求规格审核 |  |  |  |  | 145, 156 → 156 |  |

## Version 5 (data date 2018-10-10, saved 2018-12-19)

Note of the change: 2018/12/19-可行性研究报告V1.1.0+项目章程V1.1.0+项目总体计划书V1.1.0+需求工程计划V1.1.0+需求规格说明书V0.1.0+甘特图更新

Last finish stays 2019-01-13. Complete tasks 159 → 172.

Added:

| ID | Task | Duration | Start | Finish | Predecessors | Resources |
| --- | --- | --- | --- | --- | --- | --- |
| 110 | 确认项目总体计划书 | 1d | 2018-12-09 A | 2018-12-10 A | 107 | 陈 |
| 112 | 确认需求工程计划 | 1d | 2018-12-09 A | 2018-12-10 A | 105 | 程 |
| 115 | 可行性分析报告 | 1d | 2018-12-07 A | 2018-12-07 A | 106 | 陈 |
| 116 | 项目章程 | 1d | 2018-12-06 A | 2018-12-06 A | 99 | 邓 |
| 159 | 管理员需求跟踪 | 8d | 2018-12-17 | 2018-12-21 | 199 | 庄 |
| 160 | 学生需求跟踪 | 8d | 2018-12-18 | 2018-12-21 | 200 | 陈; 邓 |
| 161 | 教师需求跟踪 | 8d | 2018-12-13 | 2018-12-16 | 198 | 程; 诸葛 |
| 199 | 管理员代表需求获取 | 1d | 2018-12-16 A | 2018-12-16 A | 195 | 庄 |
| 200 | 教师代表需求获取 | 1d | 2018-12-17 A | 2018-12-17 A | 194 | 邓; 庄 |
| 201 | 第十三次小组会议 | 1d | 2018-12-19 A | 2018-12-19 A | 196, 197 | 陈; 程; 邓; 诸葛; 庄 |
| 202 | 第十二周绩效考评 | 1d | 2018-12-19 A | 2018-12-19 A | 196 | 陈; 程; 邓; 诸葛; 庄 |
| 203 | <新任务> | 1d? | 2018-09-25 | 2018-09-25 |  |  |

Changed:

| ID | Task | Start | Finish | Duration | Complete | Predecessors | Other |
| --- | --- | --- | --- | --- | --- | --- | --- |
| 1 | **软件工程系列课程教学辅助网站需求工程计划** |  |  |  | 76% → 77% |  |  |
| 40 | **项目计划** |  | 2018-12-10 → 2018-12-11 (+1d) | 126d → 127d |  |  |  |
| 109 | 确认可行性分分析报告 |  |  |  |  |  | was named 可行性分分析报告 |
| 113 | 需求工程计划 | 2018-12-09 A → 2018-12-10 A (+1d) | 2018-12-10 A → 2018-12-11 A (+1d) |  |  | 105 → 112 | resources 程 → 诸葛 |
| 114 | 项目总体计划书 | 2018-12-09 A → 2018-12-10 A (+1d) | 2018-12-10 A → 2018-12-11 A (+1d) |  |  | 107 → 110 | resources 陈 → 程 |
| 117 | **项目执行** |  |  |  | 56% → 61% |  |  |
| 118 | **需求开发** |  |  |  | 73% → 76% |  |  |
| 143 | **需求分析** |  |  |  | 15% → 99% |  |  |
| 145 | 绘制高保真APP原型 | 2018-12-15 A | 2018-12-16 A |  | 0% → 100% |  |  |
| 146 | 绘制高保真网站原型 | 2018-12-15 A | 2018-12-16 A |  | 0% → 100% |  |  |
| 147 | 确定需求优先级 | 2018-11-30 A | 2018-11-30 A |  | 0% → 100% |  |  |
| 149 | **需求规格说明** |  |  |  | 6% → 30% |  |  |
| 150 | **编写需求规格说明书** |  |  |  | 6% → 75% |  |  |
| 152 | 需求规格说明书第一二章节 |  |  |  |  | 134, 114, 109 → 134, 110, 109 |  |
| 153 | 需求规格说明书第三章 | 2018-12-15 A | 2018-12-18 A |  | 0% → 100% |  |  |
| 154 | 需求规格说明书第四章 | 2018-12-15 A | 2018-12-18 A |  | 0% → 100% |  |  |
| 164 | **项目监控** |  |  |  | 100% → 97% |  |  |
| 198 | 学生代表需求初步获取会议 |  |  |  |  | 197 → 197, 202 |  |

## Version 6 (data date 2018-10-10, saved 2018-12-22)

Note of the change: 2018/12/23-UML3更新+甘特图更新+需求规格说明书V0.1.1+UML4+20181216评分+20181223评分

Last finish stays 2019-01-13. Complete tasks 172 → 187.

Added:

| ID | Task | Duration | Start | Finish | Predecessors | Resources |
| --- | --- | --- | --- | --- | --- | --- |
| 158 | 整合管理员需求 | 8d | 2018-12-17 A | 2018-12-21 A | 212 | 庄 |
| 159 | 编写管理员用例图 | 8d | 2018-12-17 A | 2018-12-21 A | 212 | 庄 |
| 160 | 编写管理员用例文档 | 8d | 2018-12-21 A | 2018-12-26 A | 159 | 庄 |
| 161 | 绘制管理员界面原型 | 8d | 2018-12-26 A | 2018-12-29 A | 160, 166, 172 | 庄 |
| 162 | 编写数据字典 | 8d | 2018-12-17 A | 2018-12-21 A | 212 | 庄 |
| 164 | 整合学生需求 | 8d | 2018-12-13 A | 2018-12-16 A | 211 | 陈; 邓 |
| 165 | 编写学生用例图 | 8d | 2018-12-13 A | 2018-12-16 A | 211 | 陈; 邓 |
| 166 | 编写学生用例文档 | 5d | 2018-12-21 A | 2018-12-23 A | 165 | 陈; 邓 |
| 167 | 绘制学生界面原型 | 8d | 2018-12-17 A | 2018-12-21 A | 211, 165 | 陈; 邓 |
| 168 | 编写数据字典 | 8d | 2018-12-21 A | 2018-12-26 A | 167 | 陈; 邓 |
| 170 | 整合教师需求 | 8d | 2018-12-17 A | 2018-12-21 A | 213 | 程; 诸葛 |
| 171 | 编写教师用例图 | 8d | 2018-12-17 A | 2018-12-21 A | 213 | 程; 诸葛 |
| 172 | 编写教师用例文档 | 6.5d | 2018-12-21 A | 2018-12-23 A | 171 | 程; 诸葛 |
| 173 | 绘制教师界面原型 | 8d | 2018-12-22 A | 2018-12-26 A | 171 | 程; 诸葛 |
| 174 | 编写数据字典 | 8d | 2018-12-26 A | 2018-12-30 A | 173 | 程; 诸葛 |

Removed: 156 需求规格说明书第六章; 157 需求规格说明书第七八章

Changed:

| ID | Task | Start | Finish | Duration | Complete | Predecessors | Other |
| --- | --- | --- | --- | --- | --- | --- | --- |
| 1 | **软件工程系列课程教学辅助网站需求工程计划** |  |  |  | 77% → 88% |  |  |
| 73 | 更新需求工程计划 |  |  | 1d → 0.25d |  |  |  |
| 74 | 更新开发计划书 |  |  | 1d → 0.5d |  |  |  |
| 85 | 更新OBS图 |  |  | 0.5d → 0.25d |  |  |  |
| 87 | 更新可行性分析报告 |  |  | 0.5d → 0.25d |  |  |  |
| 88 | 修改里程碑 |  |  | 1d → 0.5d |  |  |  |
| 90 | 更新需求工程计划 |  |  | 0.5d → 0.25d |  |  |  |
| 94 | 更新需求工程计划 |  |  | 0.5d → 0.25d |  |  |  |
| 98 | 更新项目章程 |  |  | 1d → 0.5d |  |  |  |
| 99 | 项目章程 |  |  | 0.5d → 0.25d |  |  |  |
| 101 | 更新需求工程计划 |  |  | 0.5d → 0.25d |  |  |  |
| 117 | **项目执行** |  |  |  | 61% → 86% |  |  |
| 118 | **需求开发** |  | 2018-12-28 → 2018-12-30 (+2d) | 57.75d? → 60.5d? | 76% → 98% |  |  |
| 131 | 更新愿景和范围文档 |  |  | 1d → 0.5d |  |  |  |
| 134 | 更新愿景和范围文档 |  |  | 1d → 0.5d |  |  |  |
| 149 | **需求规格说明** |  |  |  | 30% → 98% |  |  |
| 150 | **编写需求规格说明书** |  | 2018-12-18 → 2018-12-20 (+2d) | 7.5d? → 8.5d | 75% → 86% |  |  |
| 155 | 需求规格说明书第五章 | 2018-12-14 → 2018-12-17 (+3d) | 2018-12-15 → 2018-12-17 (+2d) | 1d? → 1d |  | none → 134, 145, 146 | resources none → 陈; 程; 邓; 诸葛 |
| 156 | 整合需求规格说明书 | 2018-12-14 → 2018-12-19 (+5d) | 2018-12-15 → 2018-12-20 (+5d) | 1d? → 1d |  | none → 151, 152, 153, 154, 155 | resources none → 庄 |
| 157 | **管理员需求跟踪** | 2018-12-17 A |  |  | 0% → 100% |  |  |
| 163 | **学生需求跟踪** |  |  |  | 0% → 100% | 213 → 211 |  |
| 169 | **教师需求跟踪** | 2018-12-13 A |  |  | 0% → 100% | 211 → 213 |  |

## Version 7 (data date 2018-10-10, saved 2018-12-29)

Note of the change: 2018/12/30-甘特图更新+系统设计与实现计划V0.1.1+20181230组内评审

Last finish stays 2019-01-13. Complete tasks 187 → 196.

Added:

| ID | Task | Duration | Start | Finish | Predecessors | Resources |
| --- | --- | --- | --- | --- | --- | --- |
| 26 | UML4:PPT制作 | 4.5d | 2018-12-24 A | 2018-12-27 A | 25 | 陈; 邓; 庄 |
| 27 | UML4：PPT修改 | 1d | 2018-12-27 A | 2018-12-27 A | 26 | 庄 |
| 28 | UML4：评审 | 1d | 2018-12-28 A | 2018-12-28 A | 27 | 庄 |
| 179 | 初步编写SRS评审PPT | 1d | 2018-12-20 | 2018-12-20 | 160 | 庄 |
| 180 | APP界面原型修改 | 4d | 2018-12-26 A | 2018-12-27 A | 171, 177 | 庄 |
| 181 | 网页端界面原型修改 | 4d | 2018-12-26 A | 2018-12-27 A | 171, 177 | 邓 |
| 182 | 需求规格说明书 | 6d | 2018-12-27 | 2018-12-29 | 160 | 陈; 程; 诸葛 |
| 224 | 第十四次小组会议 | 1d | 2018-12-26 A | 2018-12-26 A | 223, 222 | 陈; 程; 邓; 诸葛; 庄 |

Changed:

| ID | Task | Start | Finish | Duration | Complete | Predecessors | Other |
| --- | --- | --- | --- | --- | --- | --- | --- |
| 1 | **软件工程系列课程教学辅助网站需求工程计划** |  |  |  | 88% → 87% |  |  |
| 3 | **知识准备——UML翻转** |  |  |  | 97% → 99% |  |  |
| 25 | UML基础3：评审 | 2018-10-12 → 2018-12-23 A (+72d) | 2018-10-13 → 2018-12-23 A (+71d) | 1d? → 0.5d | 0% → 100% | none → 24 | resources none → 庄 |
| 121 | **项目执行** |  |  |  | 86% → 85% |  |  |
| 122 | **需求开发** |  |  |  | 98% → 96% |  |  |
| 153 | **需求规格说明** |  |  |  | 98% → 94% |  |  |
| 154 | **编写需求规格说明书** |  |  |  | 86% → 93% |  |  |
| 160 | 整合需求规格说明书 | 2018-12-19 A | 2018-12-20 A |  | 0% → 100% |  |  |
| 185 | **项目监控** |  |  |  | 97% → 100% |  |  |
| 225 | 与杨枨老师进行教师需求访谈 | 2018-09-25 → 2018-12-17 A (+83d) | 2018-09-25 → 2018-12-18 A (+84d) | 1d? → 1d | 0% → 100% | none → 221 | was named <新任务>; resources none → 陈; 程; 邓; 诸葛; 庄 |

## Version 8 (data date 2018-10-10, saved 2019-01-03)

Note of the change: 2019/01/03-甘特图更新+愿景和范围文档V0.2.2+测试用例(教师)+用例文档(教师)+管理员访谈记录

Last finish stays 2019-01-13. Complete tasks 196 → 210.

Added:

| ID | Task | Duration | Start | Finish | Predecessors | Resources |
| --- | --- | --- | --- | --- | --- | --- |
| 182 | APP界面原型绘制 | 9.75d | 2018-12-27 A | 2019-01-03 A | 179 | 庄 |
| 183 | 网页端界面原型绘制 | 9.75d | 2018-12-27 A | 2019-01-03 A | 180 | 邓 |
| 184 | 需求规格说明书更新 | 3.5d | 2018-12-29 A | 2018-12-30 A | 181 | 邓 |
| 185 | 需求规格说明书更新 | 3.5d | 2018-12-23 A | 2018-12-25 A | 181 | 陈 |
| 186 | 需求规格说明书更新 | 3.5d | 2018-12-23 A | 2018-12-25 A | 181 | 程 |
| 187 | 系统设计与实现编写 | 1d | 2018-12-30 A | 2018-12-30 A | 186 | 陈; 程; 诸葛 |
| 188 | E-R图更新 | 6.75d | 2019-01-01 A | 2019-01-03 A | 137 | 程 |
| 189 | 范围与愿景文档更新 | 1d | 2019-01-03 A | 2019-01-03 A | 137 | 庄 |
| 232 | 第十三周绩效考评 | 1d | 2018-12-26 A | 2018-12-26 A | 231 | 陈; 程; 邓; 诸葛; 庄 |
| 234 | 第十五次小组会议 | 1d | 2019-01-02 A | 2019-01-02 A | 231 | 陈; 程; 邓; 诸葛; 庄 |
| 235 | 第十四周绩效考评 | 1d | 2019-01-02 A | 2019-01-02 A | 234 | 陈; 程; 邓; 诸葛; 庄 |
| 236 | 与杨枨老师进行第一次教师需求确认 | 1d | 2018-12-27 A | 2018-12-27 A | 233 | 陈; 邓; 诸葛; 庄 |
| 237 | 与杨枨老师进行第二次教师需求确认 | 1d | 2019-01-03 | 2019-01-03 | 236 | 陈; 庄 |

Changed:

| ID | Task | Start | Finish | Duration | Complete | Predecessors |
| --- | --- | --- | --- | --- | --- | --- |
| 1 | **软件工程系列课程教学辅助网站需求工程计划** |  |  |  | 87% → 90% |  |
| 120 | **项目执行** |  |  |  | 85% → 89% |  |
| 121 | **需求开发** |  | 2018-12-30 → 2019-01-03 (+4d) | 60.5d? → 70d? | 96% → 99% |  |
| 152 | **需求规格说明** |  |  |  | 94% → 99% |  |
| 178 | 初步编写SRS评审PPT | 2018-12-20 A | 2018-12-20 A |  | 0% → 100% |  |
| 181 | 需求规格说明书 | 2018-12-27 → 2018-12-20 A (-7d) | 2018-12-29 → 2018-12-23 A (-6d) |  | 0% → 100% |  |
| 192 | **项目监控** |  |  |  | 100% → 97% |  |
| 226 | 学生代表需求初步获取会议 |  |  |  |  | 225, 230 → 225, 230, 232, 235 |
| 233 | 与杨枨老师进行教师需求访谈 | 2018-12-17 A → 2018-12-26 A (+9d) | 2018-12-18 A → 2018-12-26 A (+8d) |  |  |  |

## Version 9 (data date 2018-10-10, saved 2019-01-11)

Note of the change: 2019/01/11-甘特图更新+需求变更评审+用例图+20190102变更阶段会议记录

Last finish stays 2019-01-13. Complete tasks 210 → 214.

Added:

| ID | Task | Duration | Start | Finish | Predecessors | Resources |
| --- | --- | --- | --- | --- | --- | --- |
| 190 | 需求规格说明书更新 | 0.5d | 2019-01-04 A | 2019-01-04 A | 181 | 陈 |
| 191 | 需求规格说明书更新 | 0.5d | 2019-01-06 A | 2019-01-06 A | 181 | 庄 |
| 192 | 需求规格说明书更新 | 0.25d | 2019-01-08 A | 2019-01-08 A | 181 | 陈; 邓 |
| 193 | 需求规格说明书更新 | 0.5d | 2019-01-09 A | 2019-01-09 A | 181 | 庄 |

Changed:

| ID | Task | Finish | Duration | Predecessors |
| --- | --- | --- | --- | --- |
| 121 | **需求开发** | 2019-01-03 → 2019-01-09 (+6d) | 70d? → 79.25d? |  |
| 187 | 系统设计与实现编写 |  |  | 186 → 186, 193, 192, 191, 190 |
| 189 | 范围与愿景文档更新 |  | 1d → 0.5d |  |
